# CognifyAI v2

Schedule from ProjectLibre, 2025-08-01 to 2026-10-07.

## Calendars

- Standard: Mon-Fri 08:00-12:00, 13:00-17:00; Sat-Sun off.

## Resources

| Resource |
| --- |
| Unassigned |
| Nithish Kumar Megarajan |
| Bharath Arun Gandhimani |
| Gokhulraj Saravanan |
| Bedict Antony |

## Schedule

| ID | WBS | Task | Duration | Start | Finish | Predecessors | Constraint | Resources |
| --- | --- | --- | --- | --- | --- | --- | --- | --- |
| 1 | 1 | **0. NeuroAdaptive Learning in Applied Classes initiative** | 309d? | 2025-08-01 | 2026-10-07 |  |  |  |
| 2 | 1.1 | **1.0 Project Management & Governance** | 284d | 2025-08-01 | 2026-09-02 |  |  |  |
| 3 | 1.1.1 | 1.1 Project Initiation & Approvals | 5d | 2025-08-01 | 2025-08-07 |  |  | Nithish Kumar Megarajan |
| 4 | 1.1.2 | M1: Project Charter Approved | 0d | 2025-08-07 | 2025-08-07 | 3 |  |  |
| 5 | 1.1.3 | 1.2 Stakeholder Engagement & Reporting | 240d | 2025-08-01 | 2026-07-02 |  |  | Bedict Antony |
| 6 | 1.1.4 | 1.3 Risk & Ethics Oversight | 240d | 2025-08-01 | 2026-07-02 |  |  | Gokhulraj Saravanan |
| 7 | 1.1.5 | 1.4 Project Closure | 2.5d | 2026-08-31 | 2026-09-02 | 60 | start no earlier than 2025-08-25 | Nithish Kumar Megarajan; Bedict Antony |
| 8 | 1.2 | **2.0 Planning & Procurement** | 40d? | 2025-08-08 | 2025-10-02 |  |  |  |
| 9 | 1.2.1 | 2.1 Finalise Requirements & Scope | 5d | 2025-08-08 | 2025-08-14 | 3 | start no earlier than 2025-08-08 | Nithish Kumar Megarajan; Bharath Arun Gandhimani |
| 10 | 1.2.2 | 2.2 Procure EEG Headbands (Batch 1) | 20d | 2025-08-22 | 2025-09-18 | 9 | start no earlier than 2025-08-22 | Gokhulraj Saravanan |
| 11 | 1.2.3 | 2.3 Procure Cloud Infrastructure | 15d | 2025-08-22 | 2025-09-11 | 9 | start no earlier than 2025-08-22 | Gokhulraj Saravanan |
| 12 | 1.2.4 | 2.4 Vendor Contract Negotiation | 10d | 2025-09-19 | 2025-10-02 | 10, 11 | start no earlier than 2025-09-19 | Bedict Antony |
| 13 | 1.2.5 | 2.5 Secure Ethical & Legal Approval | 10d | 2025-08-22 | 2025-09-04 | 9 | start no earlier than 2025-08-22 | Nithish Kumar Megarajan; Gokhulraj Saravanan |
| 14 | 1.2.6 | M2: Ethical Approval Secured | 0d? | 2025-09-19 | 2025-09-19 | 13 | start no earlier than 2025-09-19 |  |
| 15 | 1.3 | **3.0 System Development & Configuration** | 273d | 2025-09-22 | 2026-10-07 |  |  |  |
| 16 | 1.3.1 | **3.1 Develop AI Dashboard (Alpha)** | 60d | 2025-09-22 | 2025-12-12 | 14 | start no earlier than 2025-09-22 | Bharath Arun Gandhimani |
| 17 | 1.3.1.1 | 3.1.1 User Interface Design & Wireframing | 10d | 2025-09-22 | 2025-10-03 |  |  | Bharath Arun Gandhimani |
| 18 | 1.3.1.2 | 3.1.2 Front-End Development | 15d | 2025-10-06 | 2025-10-24 | 17 | start no earlier than 2025-10-06 | Bharath Arun Gandhimani |
| 19 | 1.3.1.3 | 3.1.3 Back-End API Development | 15d | 2025-10-27 | 2025-11-14 | 18 | start no earlier than 2025-10-27 | Gokhulraj Saravanan |
| 20 | 1.3.1.4 | 3.1.4 EEG Signal Integration | 5d | 2025-11-17 | 2025-11-28 | 19 | start no earlier than 2025-11-17 | Nithish Kumar Megarajan; Gokhulraj Saravanan |
| 21 | 1.3.1.5 | 3.1.5 Data Anonymisation & Privacy Features | 5d | 2025-12-01 | 2025-12-12 | 20 | start no earlier than 2025-12-01 | Bharath Arun Gandhimani; Gokhulraj Saravanan |
| 22 | 1.3.2 | **3.2 Build Cloud Analytics Engine** | 25d | 2025-12-01 | 2026-01-02 | 20 | start no earlier than 2025-12-01 | Nithish Kumar Megarajan; Bharath Arun Gandhimani |
| 23 | 1.3.2.1 | 3.2.1 Database Schema Design | 5d | 2025-12-01 | 2025-12-05 |  |  | Gokhulraj Saravanan |
| 24 | 1.3.2.2 | 3.2.2 AI Model Selection & Configuration | 10d | 2025-12-08 | 2025-12-19 | 23 | start no earlier than 2025-12-08 | Bharath Arun Gandhimani |
| 25 | 1.3.2.3 | 3.2.3 Data Processing Logic | 10d | 2025-12-22 | 2026-01-02 | 24 | start no earlier than 2025-12-22 | Nithish Kumar Megarajan |

| ID | WBS | Task | Duration | Start | Finish | Predecessors | Constraint | Resources |
| --- | --- | --- | --- | --- | --- | --- | --- | --- |
| 26 | 1.3.3 | **3.3 Internal Testing & Debugging** | 20d | 2026-01-07 | 2026-02-04 | 21, 25 | start no earlier than 2026-01-07 | Nithish Kumar Megarajan; Gokhulraj Saravanan |
| 27 | 1.3.3.1 | 3.3.1 Unit & Integration Testing | 10d | 2026-01-07 | 2026-01-20 |  |  | Gokhulraj Saravanan |
| 28 | 1.3.3.2 | 3.3.2 System Bug Fixes | 10d | 2026-01-21 | 2026-02-03 | 27 | start no earlier than 2026-01-21 | Bharath Arun Gandhimani |
| 29 | 1.3.3.3 | M3: System Ready for Pilot | 0d | 2026-02-04 | 2026-02-04 | 28 | start no earlier than 2026-02-04 |  |
| 30 | 1.3.4 | **4.0 Training & Change Management** | 22d | 2026-01-07 | 2026-02-05 |  |  |  |
| 31 | 1.3.4.1 | 4.1 Development Tutor Training Materials | 10d | 2026-01-07 | 2026-01-20 | 25 | start no earlier than 2026-01-07 | Bedict Antony |
| 32 | 1.3.4.2 | 4.2 Deliver Training Workshops (Cohort 1) | 5d | 2026-01-21 | 2026-01-27 | 31 | start no earlier than 2026-01-21 | Bedict Antony; Nithish Kumar Megarajan |
| 33 | 1.3.4.3 | M4: Tutor Training Complete | 0d | 2026-02-04 | 2026-02-04 | 32 | start no earlier than 2026-02-04 |  |
| 34 | 1.3.4.4 | 4.3 Develop Digital Adoption Guides | 5d | 2026-01-21 | 2026-01-27 | 31 | start no earlier than 2026-01-21 | Bedict Antony |
| 35 | 1.3.4.5 | 4.4 Tutor Onboarding & Support | 2d | 2026-02-04 | 2026-02-05 | 32, 34 | start no earlier than 2026-02-04 | Bedict Antony |
| 36 | 1.3.5 | **5.0 Pilot Deployment (Phase 1)** | 70d | 2026-02-05 | 2026-05-13 |  |  |  |
| 37 | 1.3.5.1 | 5.1 Install EEG Devices in Pilot Units | 2.5d | 2026-02-05 | 2026-02-09 | 29, 33 | start no earlier than 2026-02-05 | Nithish Kumar Megarajan; Gokhulraj Saravanan |
| 38 | 1.3.5.2 | 5.2 Configure IT Systems & Dashboard Access | 5d | 2026-02-12 | 2026-02-18 | 37 | start no earlier than 2026-02-12 | Bharath Arun Gandhimani |
| 39 | 1.3.5.3 | M5: Pilot Deployment Begins | 0d | 2026-02-19 | 2026-02-19 | 38 | start no earlier than 2026-02-19 |  |
| 40 | 1.3.5.4 | 5.3 Conduct Live Pilot (Semester 1) | 15d | 2026-02-19 | 2026-03-11 | 39 | start no earlier than 2026-02-19 | Nithish Kumar Megarajan; Bharath Arun Gandhimani; Gokhulraj Saravanan; Bedict Antony |
| 41 | 1.3.5.5 | 5.4 Provide Technical Support | 60d | 2026-02-19 | 2026-05-13 | 39 | start no earlier than 2026-02-19 | Gokhulraj Saravanan |
| 42 | 1.3.6 | **6.0 Pilot Evauation & Iteration** | 51d | 2026-05-20 | 2026-07-29 |  |  |  |
| 43 | 1.3.6.1 | 6.1 Collect Quantitative Data | 10d | 2026-05-20 | 2026-06-02 | 40 | start no earlier than 2026-05-20 | Bharath Arun Gandhimani |
| 44 | 1.3.6.2 | 6.2 Conduct Quantitative Interviews & Surveys | 5d | 2026-05-20 | 2026-05-26 | 40 | start no earlier than 2026-05-20 | Bedict Antony |
| 45 | 1.3.6.3 | M6: Data Collection Complete | 0d | 2026-06-03 | 2026-06-03 |  | start no earlier than 2026-06-03 |  |
| 46 | 1.3.6.4 | 6.3 Analyse Pilot Results vs KPIs | 7.5d | 2026-06-04 | 2026-06-15 | 45 | start no earlier than 2026-06-04 | Nithish Kumar Megarajan; Bharath Arun Gandhimani |
| 47 | 1.3.6.5 | 6.4 Implement System Iterations & Fixes | 10d | 2026-06-25 | 2026-07-08 | 46 | start no earlier than 2026-06-25 | Gokhulraj Saravanan; Bharath Arun Gandhimani |
| 48 | 1.3.6.6 | 6.5 Prepare Iteration Report | 5d | 2026-07-23 | 2026-07-29 | 47 | start no earlier than 2026-07-23 | Bedict Antony |
| 49 | 1.3.7 | **7.0 Expansion & Scalability** | 75d | 2026-06-25 | 2026-10-07 |  |  |  |
| 50 | 1.3.7.1 | 7.1 Develop Expansion Plan & Budget | 5d | 2026-06-25 | 2026-07-01 | 46 | start no earlier than 2026-06-25 | Nithish Kumar Megarajan; Bedict Antony |
| 51 | 1.3.7.2 | 7.2 Procure Additional EEG Headbands (Batch 2) | 20d | 2026-07-09 | 2026-08-05 | 50 | start no earlier than 2026-07-09 | Nithish Kumar Megarajan |
| 52 | 1.3.7.3 | 7.3 Secure New Faculty Approvals | 15d | 2026-07-09 | 2026-07-29 | 50 | start no earlier than 2026-07-09 | Bedict Antony |
| 53 | 1.3.7.4 | 7.4 Prepare New IT Infrastructure | 10d | 2026-08-06 | 2026-08-19 | 51, 52 | start no earlier than 2026-08-06 | Gokhulraj Saravanan |
| 54 | 1.3.7.5 | 7.5 Develop Training Materials for New Cohorts | 10d | 2026-08-20 | 2026-09-02 | 53 | start no earlier than 2026-08-20 | Bedict Antony |
| 55 | 1.3.7.6 | 7.6 Conduct Pilot Rollout (Semester 2) | 25d | 2026-09-03 | 2026-10-07 | 54 | start no earlier than 2026-09-03 | Nithish Kumar Megarajan; Bharath Arun Gandhimani; Gokhulraj Saravanan; Bedict Antony |

| ID | WBS | Task | Duration | Start | Finish | Predecessors | Constraint | Resources |
| --- | --- | --- | --- | --- | --- | --- | --- | --- |
| 56 | 1.3.8 | **8.0 Project Finalization** | 30d | 2026-07-30 | 2026-09-09 |  |  |  |
| 57 | 1.3.8.1 | **8.1 Final Evaluation & Reporting** | 22.5d | 2026-07-30 | 2026-08-31 | 48 | start no earlier than 2026-07-23 | Nithish Kumar Megarajan; Gokhulraj Saravanan; Bedict Antony |
| 58 | 1.3.8.1.1 | 8.1.1 Quantitative Impact Synthesis | 10d | 2026-07-30 | 2026-08-12 |  | start no earlier than 2026-07-23 | Bharath Arun Gandhimani |
| 59 | 1.3.8.1.2 | 8.1.2 Quantitative Feedback Synthesis | 10d | 2026-08-13 | 2026-08-26 | 58 | start no earlier than 2026-08-06 | Bedict Antony |
| 60 | 1.3.8.1.3 | 8.1.3 Draft Final Report & Executive Summary | 2.5d | 2026-08-27 | 2026-08-31 | 59 | start no earlier than 2026-08-20 | Nithish Kumar Megarajan; Bedict Antony |
| 61 | 1.3.8.1.4 | M7: Final Report Submitted | 0d | 2026-08-31 | 2026-08-31 | 60 | start no earlier than 2026-08-27 |  |
| 62 | 1.3.8.2 | 8.2 Future Feature Roadmap | 7.5d | 2026-08-31 | 2026-09-09 | 61 | start no earlier than 2026-08-27 | Nithish Kumar Megarajan; Gokhulraj Saravanan |
| 63 | 1.3.8.3 | 8.3 Financial Closure & Handover | 5d | 2026-08-31 | 2026-09-07 | 61 | start no earlier than 2026-08-27 | Bharath Arun Gandhimani |
| 64 | 1.3.8.4 | M8: Project Officially Closed | 0d | 2026-09-07 | 2026-09-07 | 63 | start no earlier than 2026-09-03 |  |
