# NeuroAdaptive tutoring

Schedule from ProjectLibre, 2025-08-01 to 2026-10-01.

## Calendars

- Standard: Mon-Fri 08:00-12:00, 13:00-17:00; Sat-Sun off.

## Resources

| Resource |
| --- |
| Unassigned |
| Nithish Kumar Megarajan |
| Bharath Arun Gandhimani |
| Gokhulraj Saravanan |
| Bedict Antony |

## Schedule

| ID | WBS | Task | Type | Duration | Start | Finish | Predecessors | Constraint | Resources |
| --- | --- | --- | --- | --- | --- | --- | --- | --- | --- |
| 1 | 1 | **0. NeuroAdaptive Learning in Applied Classes initiative** |  | 305d? | 2025-08-01 | 2026-10-01 |  |  |  |
| 2 | 1.1 | **1.0 Project Management and Governance** |  | 303d? | 2025-08-01 | 2026-09-29 |  |  |  |
| 3 | 1.1.1 | 1.1 Project Initiation & Approvals |  | 5d? | 2025-08-01 | 2025-08-07 |  |  | Nithish Kumar Megarajan |
| 4 | 1.1.2 | M1: Project Charter Approved | milestone | 1d? | 2025-08-08 | 2025-08-08 | 3 | start no earlier than 2025-08-07 |  |
| 5 | 1.1.3 | 1.2 Stakeholder Engagement & Reporting |  | 297d? | 2025-08-01 | 2026-09-21 |  | start no earlier than 2025-08-01 | Bedict Antony |
| 6 | 1.1.4 | 1.3 Risk & Ethics Oversight |  | 303d? | 2025-08-01 | 2026-09-29 |  | start no earlier than 2025-08-01 | Gokhulraj Saravanan |
| 7 | 1.1.5 | 1.4 Project Closure Activities |  | 0.5d? | 2026-09-17 | 2026-09-17 | 62 | start no earlier than 2026-07-05 | Nithish Kumar Megarajan; Bedict Antony |
| 8 | 1.2 | **2.0 Planning & Procurement** |  | 44d? | 2025-08-08 | 2025-10-08 | 3 | start no earlier than 2025-08-08 |  |
| 9 | 1.2.1 | 2.1 Finalise Requirements & Scope |  | 2.5d? | 2025-08-08 | 2025-08-12 | 3 | start no earlier than 2025-08-08 | Nithish Kumar Megarajan; Bharath Arun Gandhimani |
| 10 | 1.2.2 | 2.2 Procure EEG Headbands (Batch 1) |  | 14d? | 2025-08-15 | 2025-09-03 | 9 | start no earlier than 2025-08-15 | Gokhulraj Saravanan |
| 11 | 1.2.3 | 2.3 Procure Cloud Infrastructure |  | 10d? | 2025-09-04 | 2025-09-17 | 10 | start no earlier than 2025-09-04 | Bharath Arun Gandhimani |
| 12 | 1.2.4 | 2.4 Vendor Contract Negotiation |  | 8d? | 2025-09-18 | 2025-09-29 | 11 | start no earlier than 2025-09-18 | Bedict Antony |
| 13 | 1.2.5 | 2.5 Secure Ethical & Legal Approval |  | 3d? | 2025-09-30 | 2025-10-02 | 12 | start no earlier than 2025-09-30 | Nithish Kumar Megarajan; Gokhulraj Saravanan |
| 14 | 1.2.6 | M2: Ethical Approval Secured | milestone | 1d? | 2025-10-08 | 2025-10-08 | 13 | start no earlier than 2025-10-08 |  |
| 15 | 1.3 | **3.0 System Development & Testing** |  | 75d? | 2025-10-09 | 2026-01-21 | 13 |  |  |
| 16 | 1.3.1 | **3.1 Develop AI Dashboard (Alpha)** |  | 34.5d? | 2025-10-09 | 2025-11-26 | 13 |  | Bharath Arun Gandhimani |
| 17 | 1.3.1.1 | 3.1.1 UI Design & Wireframing |  | 7d? | 2025-10-09 | 2025-10-17 | 13 | start no earlier than 2025-10-09 | Bharath Arun Gandhimani |
| 18 | 1.3.1.2 | 3.1.2 Front-End Development |  | 11d? | 2025-10-20 | 2025-11-03 | 17 | start no earlier than 2025-10-19 | Bharath Arun Gandhimani |
| 19 | 1.3.1.3 | 3.1.3 Back-End API Development |  | 11d? | 2025-11-04 | 2025-11-18 | 18 | start no earlier than 2025-11-03 | Gokhulraj Saravanan |
| 20 | 1.3.1.4 | 3.1.4 EEG Signal Integration |  | 2.5d? | 2025-11-19 | 2025-11-21 | 19 | start no earlier than 2025-11-18 | Nithish Kumar Megarajan; Gokhulraj Saravanan |
| 21 | 1.3.1.5 | 3.1.5 Data Privacy Features |  | 2.5d? | 2025-11-24 | 2025-11-26 | 20 | start no earlier than 2025-11-24 | Bharath Arun Gandhimani; Gokhulraj Saravanan |
| 22 | 1.3.2 | **3.2 Build Cloud Analytics Engine** |  | 21d? | 2025-12-01 | 2025-12-29 | 21 |  | Nithish Kumar Megarajan; Bharath Arun Gandhimani |
| 23 | 1.3.2.1 | 3.2.1 Database Schema Design |  | 6d? | 2025-12-01 | 2025-12-08 | 21 | start no earlier than 2025-12-01 | Gokhulraj Saravanan |
| 24 | 1.3.2.2 | 3.2.2 AI Model Configuration |  | 8d? | 2025-12-09 | 2025-12-18 | 23 | start no earlier than 2025-12-08 | Bharath Arun Gandhimani |
| 25 | 1.3.2.3 | 3.2.3 Data Processing Logic |  | 7d? | 2025-12-19 | 2025-12-29 | 24 | start no earlier than 2025-12-18 | Nithish Kumar Megarajan |

| ID | WBS | Task | Type | Duration | Start | Finish | Predecessors | Constraint | Resources |
| --- | --- | --- | --- | --- | --- | --- | --- | --- | --- |
| 26 | 1.3.3 | **3.3 Internal Testing & Debugging** |  | 16d? | 2025-12-30 | 2026-01-20 | 25 |  | Nithish Kumar Megarajan; Gokhulraj Saravanan |
| 27 | 1.3.3.1 | 3.3.1 Unit & Integration Testing |  | 8d? | 2025-12-30 | 2026-01-08 | 25 | start no earlier than 2025-12-26 | Gokhulraj Saravanan |
| 28 | 1.3.3.2 | 3.3.2 System Bug Fixes |  | 8d? | 2026-01-09 | 2026-01-20 | 27 | start no earlier than 2026-01-07 | Bharath Arun Gandhimani |
| 29 | 1.3.4 | M3: System Ready for Pilot | milestone | 1d? | 2026-01-21 | 2026-01-21 | 28 | start no earlier than 2026-01-16 |  |
| 30 | 1.4 | **4.0 Training & Change Management** |  | 14d? | 2026-01-21 | 2026-02-09 | 28 |  |  |
| 31 | 1.4.1 | 4.1 Develop Training Materials |  | 6d? | 2026-01-21 | 2026-01-28 | 28 | start no earlier than 2026-01-17 | Bedict Antony |
| 32 | 1.4.2 | 4.2 Deliver Workshops (Cohort 1) |  | 2d? | 2026-01-29 | 2026-01-30 | 31 | start no earlier than 2026-01-27 | Bedict Antony; Nithish Kumar Megarajan |
| 33 | 1.4.3 | 4.3 Develop Adoption Guides |  | 5d? | 2026-02-02 | 2026-02-06 | 32 | start no earlier than 2026-01-30 | Bedict Antony |
| 34 | 1.4.4 | 4.4 Tutor Onboarding & Support |  | 1d? | 2026-02-09 | 2026-02-09 | 33 | start no earlier than 2026-02-06 | Bedict Antony |
| 35 | 1.4.5 | M4: Tutor Training Complete | milestone | 0d? | 2026-02-09 | 2026-02-09 | 34 | start no earlier than 2026-02-07 |  |
| 36 | 1.5 | **5.0 Pilot Deployment & Evaluation** |  | 95d? | 2026-02-10 | 2026-06-22 | 34 |  |  |
| 37 | 1.5.1 | **5.1 Pilot Deployment (Phase 1)** |  | 59d? | 2026-02-10 | 2026-05-01 | 34 |  |  |
| 38 | 1.5.1.1 | 5.1.1 Install EEG Devices |  | 1d? | 2026-02-10 | 2026-02-10 | 34 | start no earlier than 2026-02-09 | Nithish Kumar Megarajan; Gokhulraj Saravanan |
| 39 | 1.5.1.2 | 5.1.2 Configure IT Systems |  | 4d? | 2026-02-11 | 2026-02-16 | 38 | start no earlier than 2026-02-11 | Bharath Arun Gandhimani |
| 40 | 1.5.1.3 | M5: Pilot Deployment Begins | milestone | 1d? | 2026-02-17 | 2026-02-17 | 39 | start no earlier than 2026-02-16 |  |
| 41 | 1.5.1.4 | 5.1.3 Conduct Live Pilot |  | 2.5d? | 2026-02-17 | 2026-02-19 | 39 | start no earlier than 2026-02-17 | Nithish Kumar Megarajan; Bharath Arun Gandhimani; Gokhulraj Saravanan; Bedict Antony |
| 42 | 1.5.1.5 | 5.1.4 Technical Support |  | 44d? | 2026-03-03 | 2026-05-01 | 41 | start no earlier than 2026-03-03 | Gokhulraj Saravanan |
| 43 | 1.5.2 | **5.2 Pilot Evaluation & Iteration** |  | 36d? | 2026-05-04 | 2026-06-22 | 42 |  |  |
| 44 | 1.5.2.1 | 5.2.1 Collect Quatitative Data |  | 6d? | 2026-05-04 | 2026-05-11 | 42 | start no earlier than 2026-05-02 | Bharath Arun Gandhimani |
| 45 | 1.5.2.2 | 5.2.2 Conduct Surveys |  | 4d? | 2026-05-12 | 2026-05-15 | 44 | start no earlier than 2026-05-12 | Bedict Antony |
| 46 | 1.5.2.3 | M6: Data Collection Complete | milestone | 1d? | 2026-05-18 | 2026-05-18 | 45 | start no earlier than 2026-05-15 |  |
| 47 | 1.5.2.4 | 5.2.3 Analyse Results vs KPIs |  | 5.5d? | 2026-05-18 | 2026-05-25 | 45 | start no earlier than 2026-05-17 | Nithish Kumar Megarajan; Bharath Arun Gandhimani |
| 48 | 1.5.2.5 | 5.2.4 Implement Fixes |  | 4d? | 2026-06-01 | 2026-06-04 | 47 | start no earlier than 2026-06-01 | Gokhulraj Saravanan; Bharath Arun Gandhimani |
| 49 | 1.5.2.6 | 5.2.5 Prepare Iteration Report |  | 8d? | 2026-06-11 | 2026-06-22 | 48 | start no earlier than 2026-06-11 | Bedict Antony |

| ID | WBS | Task | Type | Duration | Start | Finish | Predecessors | Constraint | Resources |
| --- | --- | --- | --- | --- | --- | --- | --- | --- | --- |
| 50 | 1.6 | **6.0 Expansion & Project Closure** |  | 73d? | 2026-06-23 | 2026-10-01 |  |  |  |
| 51 | 1.6.1 | **6.1 Expansion & Scalability** |  | 45.75d? | 2026-06-23 | 2026-08-25 | 49 |  |  |
| 52 | 1.6.1.1 | 6.1.1 Expansion Plan & Budget |  | 2.5d? | 2026-06-23 | 2026-06-25 | 49 | start no earlier than 2026-06-22 | Nithish Kumar Megarajan; Bedict Antony |
| 53 | 1.6.1.2 | 6.1.2 Procure EEG Headbands (Batch 2) |  | 14d? | 2026-06-27 | 2026-07-16 | 52 | start no earlier than 2026-06-27 | Nithish Kumar Megarajan |
| 54 | 1.6.1.3 | 6.1.3 Secure Faculty Approvals |  | 11d? | 2026-07-17 | 2026-07-31 | 53 | start no earlier than 2026-07-17 | Bedict Antony |
| 55 | 1.6.1.4 | 6.1.4 New IT Infrastructure |  | 6d? | 2026-08-03 | 2026-08-10 | 54 | start no earlier than 2026-08-01 | Gokhulraj Saravanan |
| 56 | 1.6.1.5 | 6.1.5 Training for New Cohorts |  | 8d? | 2026-08-11 | 2026-08-20 | 55 | start no earlier than 2026-08-11 | Bedict Antony |
| 57 | 1.6.1.6 | 6.1.6 Pilot Rollout (Sem 2) |  | 2.75d? | 2026-08-21 | 2026-08-25 | 56 | start no earlier than 2026-08-21 | Nithish Kumar Megarajan; Bharath Arun Gandhimani; Gokhulraj Saravanan; Bedict Antony |
| 58 | 1.6.2 | **6.2 Project Finalisation** |  | 17d? | 2026-09-05 | 2026-09-29 |  |  |  |
| 59 | 1.6.2.1 | **6.2.1 Final Evaluation & Reporting** |  | 8.5d? | 2026-09-05 | 2026-09-17 |  |  | Nithish Kumar Megarajan; Gokhulraj Saravanan; Bedict Antony |
| 60 | 1.6.2.1.1 | 6.2.1.1 Impact Synthesis |  | 3d? | 2026-09-05 | 2026-09-09 | 57 | start no earlier than 2026-09-05 | Bharath Arun Gandhimani |
| 61 | 1.6.2.1.2 | 6.2.1.2 Feedback Synthesis |  | 3d? | 2026-09-10 | 2026-09-14 | 60 | start no earlier than 2026-09-10 | Bedict Antony |
| 62 | 1.6.2.1.3 | 6.2.1.3 Draft Final Report |  | 2.5d? | 2026-09-15 | 2026-09-17 |  | start no earlier than 2026-09-15 | Nithish Kumar Megarajan; Bedict Antony |
| 63 | 1.6.2.2 | M7: Final Report Submitted | milestone | 1d? | 2026-09-21 | 2026-09-21 | 62 | start no earlier than 2026-09-21 |  |
| 64 | 1.6.2.3 | 6.2.2 Future Feature Roadmap |  | 2d? | 2026-09-21 | 2026-09-22 | 62 | start no earlier than 2026-09-21 | Nithish Kumar Megarajan; Gokhulraj Saravanan |
| 65 | 1.6.2.4 | 6.2.3 Financial Closure & Handover |  | 3d? | 2026-09-25 | 2026-09-29 | 64 | start no earlier than 2026-09-25 | Bharath Arun Gandhimani |
| 66 | 1.6.3 | M8: Project Closed | milestone | 1d? | 2026-10-01 | 2026-10-01 | 65 | start no earlier than 2026-10-01 |  |
